How a schedule from MS Project changed from version to version. A marks actual dates.

## Version 1 (saved 2024-09-12, file DeTai_Nhom09.mpp)

Note of the change: Add: MicrosoftProject deTai

| ID | WBS | Task | Duration | Start | Finish | Predecessors | Total float |
| --- | --- | --- | --- | --- | --- | --- | --- |
| 1 | 1 | **Tin học hóa Đại hoc MC** | 263d | 2024-09-02 | 2025-09-03 |  | 0d |
| 2 | 1.1 | **Khởi động dự án** | 26d | 2024-09-02 | 2024-10-07 |  | 0d |
| 3 |  | Xác định yêu cầu ban đầu | 2w | 2024-09-02 | 2024-09-13 |  | 0d |
| 4 |  | Lập kế hoạch cho dự án | 11d | 2024-09-16 | 2024-09-30 | 3 | 0d |
| 5 |  | Phân công đội ngũ | 5d | 2024-10-01 | 2024-10-07 | 4 | 0d |
| 6 | 1.2 | **Phân tích và thiết kế hệ thông** | 45d | 2024-10-08 | 2024-12-09 |  | 0d |
| 7 |  | Phân tích yêu cầu chi tiết | 2w | 2024-10-08 | 2024-10-21 | 5 | 0d |
| 8 |  | Thiết kế cơ sở dữ liệu | 2w | 2024-10-22 | 2024-11-04 | 7 | 0d |
| 9 |  | Thiết kế hệ thông backend | 1w | 2024-11-05 | 2024-11-11 | 8 | 0d |
| 10 |  | Thiết kế giao diện người dùng | 1mo | 2024-11-12 | 2024-12-09 | 9 | 0d |
| 11 | 1.3 | **Phát triển hệ thống** | 140d | 2024-12-10 | 2025-06-23 |  | 0d |
| 12 | 1.3.1 | **Backend** | 55d | 2024-12-10 | 2025-02-24 |  | 0d |
| 13 |  | Xây dựng cơ sở dữ liệu | 1mo | 2024-12-10 | 2025-01-06 | 10 | 0d |
| 14 |  | Phát triển API cho hệ thống | 1mo | 2025-01-07 | 2025-02-03 | 13 | 0d |
| 15 |  | Tích hợp bảo mật | 3w | 2025-02-04 | 2025-02-24 | 14 | 0d |
| 16 | 1.3.2 | **Fontend** | 60d | 2025-02-25 | 2025-05-19 |  | 0d |
| 17 |  | Phát triển giao diện cho sinh viên | 1mo | 2025-02-25 | 2025-03-24 | 15 | 0d |
| 18 |  | Phát triển giao diện cho giảng viên | 1mo | 2025-03-25 | 2025-04-21 | 17 | 0d |
| 19 |  | Phát triển giao diện cho quản lý | 1mo | 2025-04-22 | 2025-05-19 | 18 | 0d |
| 20 | 1.3.3 | **Tích hợp và kiểm thử nội bộ** | 25d | 2025-05-20 | 2025-06-23 |  | 0d |
| 21 |  | Tích hợp fontend và backend | 3w | 2025-05-20 | 2025-06-09 | 19 | 0d |
| 22 |  | Kiểm thử nội bộ | 2w | 2025-06-10 | 2025-06-23 | 21 | 0d |
| 23 | 1.4 | **Kiểm thử hệ thống** | 32d | 2025-06-24 | 2025-08-06 | 22 | 0d |
| 24 |  | Kiểm thử chức năng | 3w | 2025-06-24 | 2025-07-14 | 22 | 0d |
| 25 |  | Kiểm thử hiệu suất | 12d | 2025-07-15 | 2025-07-30 | 24 | 0d |
| 26 |  | Kiểm thử bảo mật | 1w | 2025-07-31 | 2025-08-06 | 25 | 0d |
| 27 | 1.5 | **Triển khai hệ thống** | 20d | 2025-08-07 | 2025-09-03 |  | 0d |
| 28 |  | Cài đặt hệ thống | 1w | 2025-08-07 | 2025-08-13 | 26 | 0d |
| 29 |  | Đào tạo người dùng | 2w | 2025-08-14 | 2025-08-27 | 28 | 0d |
| 30 |  | Triển khai chinh thức | 1w | 2025-08-28 | 2025-09-03 | 29 | 0d |

## Version 2 (data date 2024-10-10, saved 2024-10-10, file DeTai_Nhom09_ver02.mpp)

Note of the change: Add: docs for QLDA

Last finish 2025-09-03 → 2025-09-12 (+9d).

Changed:

| ID | Task | Start | Finish | Duration | Total float | Other |
| --- | --- | --- | --- | --- | --- | --- |
| 1 | **Tin học hóa Đại hoc MC** | 2024-09-02 → 2024-09-16 (+14d) | 2025-09-03 → 2024-10-11 (-327d) | 263d → 20d? | 0d → none |  |
| 2 | **Khởi động dự án** | 2024-09-02 → 2024-09-16 (+14d) | 2024-10-07 → 2024-10-11 (+4d) | 26d → 20d |  |  |
| 3 | Xác định yêu cầu ban đầu | 2024-09-02 → 2024-09-16 (+14d) | 2024-09-13 → 2024-09-27 (+14d) |  |  | resources none → Lê Minh Thật; Nguyễn Thành Đạt; Nguyễn Ngọc Hân; Phạm Minh Hiếu |
| 4 | Lập kế hoạch cho dự án | 2024-09-16 → 2024-09-30 (+14d) | 2024-09-30 → 2024-10-04 (+4d) | 11d → 1w |  | resources none → Lê Minh Thật; Nguyễn Thành Đạt; Nguyễn Ngọc Hân; Phạm Minh Hiếu |
| 5 | Phân công đội ngũ | 2024-10-01 → 2024-10-07 (+6d) | 2024-10-07 → 2024-10-11 (+4d) |  |  | resources none → Lê Minh Thật; Nguyễn Thành Đạt; Nguyễn Ngọc Hân; Phạm Minh Hiếu |
| 6 | **Phân tích và thiết kế hệ thông** | 2024-10-08 → 2024-10-11 (+3d) | 2024-12-09 → 2025-09-12 (+277d) | 45d → 237d |  |  |
| 7 | Phân tích yêu cầu chi tiết | 2024-10-08 → 2024-10-11 (+3d) | 2024-10-21 → 2024-10-25 (+4d) |  |  | resources none → Nguyễn Thành Đạt; Nguyễn Ngọc Hân; Phạm Minh Hiếu |
| 8 | Thiết kế cơ sở dữ liệu | 2024-10-22 → 2024-10-28 (+6d) | 2024-11-04 → 2024-11-08 (+4d) |  |  | resources none → Nguyễn Thành Đạt; Nguyễn Ngọc Hân; Phạm Minh Hiếu |
| 9 | Thiết kế hệ thông backend | 2024-11-05 → 2024-11-11 (+6d) | 2024-11-11 → 2024-11-15 (+4d) |  |  | resources none → Nguyễn Thành Đạt; Nguyễn Ngọc Hân; Phạm Minh Hiếu |
| 10 | Thiết kế giao diện người dùng | 2024-11-12 → 2024-11-18 (+6d) | 2024-12-09 → 2024-12-13 (+4d) |  |  | resources none → Nguyễn Thành Đạt; Nguyễn Ngọc Hân; Phạm Minh Hiếu; Phần mềm AdobeXD [0 Phần mềm] |
| 11 | **Phát triển hệ thống** | 2024-12-10 → 2024-12-16 (+6d) | 2025-06-23 → 2025-07-02 (+9d) |  |  |  |
| 12 | **Backend** | 2024-12-10 → 2024-12-16 (+6d) | 2025-02-24 → 2025-03-03 (+7d) |  |  |  |
| 13 | Xây dựng cơ sở dữ liệu | 2024-12-10 → 2024-12-16 (+6d) | 2025-01-06 → 2025-01-13 (+7d) |  |  | resources none → Lương Gia Bảo; Man Nhật Tùng; Server [1 Server]; Phần mềm IDE [0.1%] |
| 14 | Phát triển API cho hệ thống | 2025-01-07 → 2025-01-14 (+7d) | 2025-02-03 → 2025-02-10 (+7d) |  |  | resources none → Lương Gia Bảo; Man Nhật Tùng |
| 15 | Tích hợp bảo mật | 2025-02-04 → 2025-02-11 (+7d) | 2025-02-24 → 2025-03-03 (+7d) |  |  | resources none → Lương Gia Bảo; Man Nhật Tùng |
| 16 | **Fontend** | 2025-02-25 → 2025-03-04 (+7d) | 2025-05-19 → 2025-05-28 (+9d) |  |  |  |
| 17 | Phát triển giao diện cho sinh viên | 2025-02-25 → 2025-03-04 (+7d) | 2025-03-24 → 2025-03-31 (+7d) |  |  | resources none → Phạm Kiên Chính; Trần Thanh Tuấn; Lê Thành; Phần mềm IDE [0.1%] |
| 18 | Phát triển giao diện cho giảng viên | 2025-03-25 → 2025-04-01 (+7d) | 2025-04-21 → 2025-04-28 (+7d) |  |  | resources none → Phạm Kiên Chính; Trần Thanh Tuấn; Lê Thành |
| 19 | Phát triển giao diện cho quản lý | 2025-04-22 → 2025-04-29 (+7d) | 2025-05-19 → 2025-05-28 (+9d) |  |  | resources none → Phạm Kiên Chính; Trần Thanh Tuấn; Lê Thành |
| 20 | **Tích hợp và kiểm thử nội bộ** | 2025-05-20 → 2025-05-29 (+9d) | 2025-06-23 → 2025-07-02 (+9d) |  |  |  |
| 21 | Tích hợp fontend và backend | 2025-05-20 → 2025-05-29 (+9d) | 2025-06-09 → 2025-06-18 (+9d) |  |  | resources none → Lương Gia Bảo; Man Nhật Tùng; Phạm Kiên Chính; Trần Thanh Tuấn; Lê Thành |
| 22 | Kiểm thử nội bộ | 2025-06-10 → 2025-06-19 (+9d) | 2025-06-23 → 2025-07-02 (+9d) |  |  | resources none → Kiều Trương Hàm Hương; Võ Công Hưng; Lương Gia Bảo; Man Nhật Tùng; Phạm Kiên Chính; Trần Thanh Tuấn; Lê Thành |
| 23 | **Kiểm thử hệ thống** | 2025-06-24 → 2025-07-03 (+9d) | 2025-08-06 → 2025-08-15 (+9d) |  |  |  |
| 24 | Kiểm thử chức năng | 2025-06-24 → 2025-07-03 (+9d) | 2025-07-14 → 2025-07-23 (+9d) |  |  | resources none → Kiều Trương Hàm Hương; Võ Công Hưng; Lương Gia Bảo; Man Nhật Tùng; Phạm Kiên Chính; Trần Thanh Tuấn; Lê Thành |
| 25 | Kiểm thử hiệu suất | 2025-07-15 → 2025-07-24 (+9d) | 2025-07-30 → 2025-08-08 (+9d) |  |  | resources none → Kiều Trương Hàm Hương; Võ Công Hưng; Lương Gia Bảo; Man Nhật Tùng; Phạm Kiên Chính; Trần Thanh Tuấn; Lê Thành |
| 26 | Kiểm thử bảo mật | 2025-07-31 → 2025-08-11 (+11d) | 2025-08-06 → 2025-08-15 (+9d) |  |  | resources none → Kiều Trương Hàm Hương; Võ Công Hưng; Lương Gia Bảo; Man Nhật Tùng; Phạm Kiên Chính; Trần Thanh Tuấn; Lê Thành |
| 27 | **Triển khai hệ thống** | 2025-08-07 → 2025-08-18 (+11d) | 2025-09-03 → 2025-09-12 (+9d) |  |  |  |
| 28 | Cài đặt hệ thống | 2025-08-07 → 2025-08-18 (+11d) | 2025-08-13 → 2025-08-22 (+9d) |  |  | resources none → Lương Gia Bảo; Man Nhật Tùng; Trần Thanh Tuấn; Lê Thành |
| 29 | Đào tạo người dùng | 2025-08-14 → 2025-08-25 (+11d) | 2025-08-27 → 2025-09-05 (+9d) |  |  | resources none → Nguyễn Thành Đạt; Nguyễn Ngọc Hân; Phạm Minh Hiếu |
| 30 | Triển khai chinh thức | 2025-08-28 → 2025-09-08 (+11d) | 2025-09-03 → 2025-09-12 (+9d) |  |  | resources none → Lê Minh Thật; Nguyễn Thành Đạt; Nguyễn Ngọc Hân; Phạm Minh Hiếu |

## Version 3 (data date 2024-11-27, saved 2024-10-18, file DeTai_Nhom09_ver03.mpp)

Note of the change: Add: docs for QLDA

Last finish 2025-09-12 → 2025-06-16 (-88d). Complete tasks 0 → 24.

Added:

| ID | Task | Duration | Start | Finish | Predecessors |
| --- | --- | --- | --- | --- | --- |
| 6 | Hoàn thành khởi động | 0d | 2024-10-02 A | 2024-10-02 A | 3, 4, 5 |
| 12 | Hoàn thành phân tích và thiết kế | 0d | 2024-11-27 A | 2024-11-27 A | 8, 9, 10, 11 |
| 18 | Hoàn thành backend | 0d | 2025-01-02 A | 2025-01-02 A | 15, 16, 17 |
| 23 | Hoàn thành frontend | 0d | 2025-03-13 A | 2025-03-13 A | 20, 21, 22 |
| 27 | Hoàn thành tích hợp | 0d | 2025-04-24 A | 2025-04-24 A | 25, 26 |
| 32 | Hoàn thành kiểm thử hệ thống | 0d | 2025-05-26 A | 2025-05-26 A | 29, 30, 31 |
| 37 | Hoàn thành dự án tin học hóa MC | 0d | 2025-06-16 A | 2025-06-16 A | 36 |

Changed:

| ID | Task | Start | Finish | Duration | Complete | Total float | Other |
| --- | --- | --- | --- | --- | --- | --- | --- |
| 1 | **Tin học hóa Đại hoc MC** | 2024-09-16 A | 2024-10-11 → 2025-06-16 (+248d) | 20d? → 193d | 0% → 99% | none → 0d |  |
| 2 | **Khởi động dự án** | 2024-09-16 A | 2024-10-11 → 2024-10-02 A (-9d) | 20d → 13d | 0% → 100% | 0d → none |  |
| 3 | Xác định yêu cầu ban đầu | 2024-09-16 A | 2024-09-27 → 2024-09-20 A (-7d) | 2w → 1w | 0% → 100% | 0d → none |  |
| 4 | Lập kế hoạch cho dự án | 2024-09-30 → 2024-09-23 A (-7d) | 2024-10-04 → 2024-09-27 A (-7d) |  | 0% → 100% | 0d → none |  |
| 5 | Phân công đội ngũ | 2024-10-07 → 2024-09-30 A (-7d) | 2024-10-11 → 2024-10-02 A (-9d) | 5d → 3d | 0% → 100% | 0d → none |  |
| 7 | **Phân tích và thiết kế hệ thông** | 2024-10-11 → 2024-10-03 A (-8d) | 2025-09-12 → 2024-11-27 (-289d) | 237d → 40d | 0% → 99% | 0d → 140d |  |
| 8 | Phân tích yêu cầu chi tiết | 2024-10-11 → 2024-10-03 A (-8d) | 2024-10-25 → 2024-10-09 A (-16d) | 2w → 1w | 0% → 100% | 0d → none | resources Nguyễn Thành Đạt; Nguyễn Ngọc Hân; Phạm Minh Hiếu → Lê Minh Thật; Nguyễn Thành Đạt; Nguyễn Ngọc Hân; Phạm Minh Hiếu |
| 9 | Thiết kế cơ sở dữ liệu | 2024-10-28 → 2024-10-10 A (-18d) | 2024-11-08 → 2024-10-23 (-16d) |  | 0% → 99% | 0d → 165d | resources Nguyễn Thành Đạt; Nguyễn Ngọc Hân; Phạm Minh Hiếu → Nguyễn Thành Đạt; Nguyễn Ngọc Hân; Phạm Minh Hiếu; Phần mềm MySQL Workbench [0.1%] |
| 10 | Thiết kế hệ thông backend | 2024-11-11 → 2024-10-24 A (-18d) | 2024-11-15 → 2024-11-06 A (-9d) | 1w → 2w | 0% → 100% | 0d → none |  |
| 11 | Thiết kế giao diện người dùng | 2024-11-18 → 2024-11-07 A (-11d) | 2024-12-13 → 2024-11-27 (-16d) | 1mo → 3w | 0% → 99% |  | resources Nguyễn Thành Đạt; Nguyễn Ngọc Hân; Phạm Minh Hiếu; Phần mềm AdobeXD [0 Phần mềm] → Nguyễn Thành Đạt; Nguyễn Ngọc Hân; Phạm Minh Hiếu; Phần mềm AdobeXD [0.1%] |
| 13 | **Phát triển hệ thống** | 2024-12-16 → 2024-11-28 A (-18d) | 2025-07-02 → 2025-04-24 (-69d) | 140d → 105d | 0% → 99% | 0d → none |  |
| 14 | **Backend** | 2024-12-16 → 2024-11-28 A (-18d) | 2025-03-03 → 2025-01-02 (-60d) | 55d → 25d | 0% → 99% | 0d → 115d |  |
| 15 | Xây dựng cơ sở dữ liệu | 2024-12-16 → 2024-11-28 A (-18d) | 2025-01-13 → 2024-12-11 (-33d) | 1mo → 2w | 0% → 99% | 0d → 130d | resources Lương Gia Bảo; Man Nhật Tùng; Server [1 Server]; Phần mềm IDE [0.1%] → Lương Gia Bảo; Man Nhật Tùng; Máy tính [2 Máy]; Server [1 Server]; Phần mềm IDE [0.1%] |
| 16 | Phát triển API cho hệ thống | 2025-01-14 → 2024-12-12 A (-33d) | 2025-02-10 → 2024-12-18 A (-54d) | 1mo → 1w | 0% → 100% | 0d → none |  |
| 17 | Tích hợp bảo mật | 2025-02-11 → 2024-12-19 A (-54d) | 2025-03-03 → 2025-01-02 A (-60d) | 3w → 2w | 0% → 100% | 0d → none |  |
| 19 | **Frontend** | 2025-03-04 → 2025-01-03 A (-60d) | 2025-05-28 → 2025-03-13 (-76d) | 60d → 50d | 0% → 99% | 0d → 65d | was named Fontend |
| 20 | Phát triển giao diện cho sinh viên | 2025-03-04 → 2025-01-03 A (-60d) | 2025-03-31 → 2025-01-23 (-67d) | 1mo → 3w | 0% → 99% | 0d → 100d | resources Phạm Kiên Chính; Trần Thanh Tuấn; Lê Thành; Phần mềm IDE [0.1%] → Phạm Kiên Chính; Trần Thanh Tuấn; Lê Thành; Máy tính [3 Máy]; Phần mềm IDE [0.1%] |
| 21 | Phát triển giao diện cho giảng viên | 2025-04-01 → 2025-01-24 A (-67d) | 2025-04-28 → 2025-02-13 A (-74d) | 1mo → 3w | 0% → 100% | 0d → none |  |
| 22 | Phát triển giao diện cho quản lý | 2025-04-29 → 2025-02-14 A (-74d) | 2025-05-28 → 2025-03-13 A (-76d) |  | 0% → 100% | 0d → none |  |
| 24 | **Tích hợp và kiểm thử nội bộ** | 2025-05-29 → 2025-03-14 A (-76d) | 2025-07-02 → 2025-04-24 A (-69d) | 25d → 30d | 0% → 100% | 0d → none |  |
| 25 | Tích hợp fontend và backend | 2025-05-29 → 2025-03-14 A (-76d) | 2025-06-18 → 2025-04-10 A (-69d) | 3w → 1mo | 0% → 100% | 0d → none |  |
| 26 | Kiểm thử nội bộ | 2025-06-19 → 2025-04-11 A (-69d) | 2025-07-02 → 2025-04-24 A (-69d) |  | 0% → 100% | 0d → none | resources Kiều Trương Hàm Hương; Võ Công Hưng; Lương Gia Bảo; Man Nhật Tùng; Phạm Kiên Chính; Trần Thanh Tuấn; Lê Thành → Lương Gia Bảo; Man Nhật Tùng; Phạm Kiên Chính; Trần Thanh Tuấn; Lê Thành; Kiều Trương Hàm Hương; Võ Công Hưng |
| 28 | **Kiểm thử hệ thống** | 2025-07-03 → 2025-04-25 A (-69d) | 2025-08-15 → 2025-05-26 A (-81d) | 32d → 20d | 0% → 100% | 0d → none |  |
| 29 | Kiểm thử chức năng | 2025-07-03 → 2025-04-25 A (-69d) | 2025-07-23 → 2025-05-12 A (-72d) | 3w → 2w | 0% → 100% | 0d → none | resources Kiều Trương Hàm Hương; Võ Công Hưng; Lương Gia Bảo; Man Nhật Tùng; Phạm Kiên Chính; Trần Thanh Tuấn; Lê Thành → Lương Gia Bảo; Man Nhật Tùng; Phạm Kiên Chính; Trần Thanh Tuấn; Lê Thành; Kiều Trương Hàm Hương; Võ Công Hưng |
| 30 | Kiểm thử hiệu suất | 2025-07-24 → 2025-05-13 A (-72d) | 2025-08-08 → 2025-05-19 A (-81d) | 12d → 1w | 0% → 100% | 0d → none | resources Kiều Trương Hàm Hương; Võ Công Hưng; Lương Gia Bảo; Man Nhật Tùng; Phạm Kiên Chính; Trần Thanh Tuấn; Lê Thành → Lương Gia Bảo; Man Nhật Tùng; Phạm Kiên Chính; Trần Thanh Tuấn; Lê Thành; Kiều Trương Hàm Hương; Võ Công Hưng |
| 31 | Kiểm thử bảo mật | 2025-08-11 → 2025-05-20 A (-83d) | 2025-08-15 → 2025-05-26 A (-81d) |  | 0% → 100% | 0d → none | resources Kiều Trương Hàm Hương; Võ Công Hưng; Lương Gia Bảo; Man Nhật Tùng; Phạm Kiên Chính; Trần Thanh Tuấn; Lê Thành → Lương Gia Bảo; Man Nhật Tùng; Phạm Kiên Chính; Trần Thanh Tuấn; Lê Thành; Kiều Trương Hàm Hương; Võ Công Hưng |
| 33 | **Triển khai hệ thống** | 2025-08-18 → 2025-05-27 A (-83d) | 2025-09-12 → 2025-06-16 A (-88d) | 20d → 15d | 0% → 100% | 0d → none |  |
| 34 | Cài đặt hệ thống | 2025-08-18 → 2025-05-27 A (-83d) | 2025-08-22 → 2025-06-02 A (-81d) |  | 0% → 100% | 0d → none | resources Lương Gia Bảo; Man Nhật Tùng; Trần Thanh Tuấn; Lê Thành → Lương Gia Bảo; Man Nhật Tùng; Phạm Kiên Chính; Trần Thanh Tuấn; Lê Thành |
| 35 | Đào tạo người dùng | 2025-08-25 → 2025-06-03 A (-83d) | 2025-09-05 → 2025-06-09 A (-88d) | 2w → 1w | 0% → 100% | 0d → none |  |
| 36 | Triển khai chinh thức | 2025-09-08 → 2025-06-10 A (-90d) | 2025-09-12 → 2025-06-16 A (-88d) |  | 0% → 100% | 0d → none |  |

## Version 4 (saved 2024-10-24, file DeTai_Nhom09_ver01.mpp)

Note of the change: Add: docs for QLDA

Last finish stays 2025-06-16. Complete tasks 24 → 0.

Removed: 6 Hoàn thành khởi động; 12 Hoàn thành phân tích và thiết kế; 18 Hoàn thành backend; 23 Hoàn thành frontend; 27 Hoàn thành tích hợp; 32 Hoàn thành kiểm thử hệ thống; 37 Hoàn thành dự án tin học hóa MC

Changed:

| ID | Task | Start | Finish | Complete | Total float | Other |
| --- | --- | --- | --- | --- | --- | --- |
| 1 | **Tin học hóa Đại hoc MC** | 2024-09-16 A → 2024-09-16 |  | 99% → 0% |  |  |
| 2 | **Khởi động dự án** | 2024-09-16 A → 2024-09-16 | 2024-10-02 A → 2024-10-02 | 100% → 0% | none → 0d |  |
| 3 | Xác định yêu cầu ban đầu | 2024-09-16 A → 2024-09-16 | 2024-09-20 A → 2024-09-20 | 100% → 0% | none → 0d | resources Lê Minh Thật; Nguyễn Thành Đạt; Nguyễn Ngọc Hân; Phạm Minh Hiếu → none |
| 4 | Lập kế hoạch cho dự án | 2024-09-23 A → 2024-09-23 | 2024-09-27 A → 2024-09-27 | 100% → 0% | none → 0d | resources Lê Minh Thật; Nguyễn Thành Đạt; Nguyễn Ngọc Hân; Phạm Minh Hiếu → none |
| 5 | Phân công đội ngũ | 2024-09-30 A → 2024-09-30 | 2024-10-02 A → 2024-10-02 | 100% → 0% | none → 0d | resources Lê Minh Thật; Nguyễn Thành Đạt; Nguyễn Ngọc Hân; Phạm Minh Hiếu → none |
| 6 | **Phân tích và thiết kế hệ thông** | 2024-10-03 A → 2024-10-03 |  | 99% → 0% | 140d → 0d |  |
| 7 | Phân tích yêu cầu chi tiết | 2024-10-03 A → 2024-10-03 | 2024-10-09 A → 2024-10-09 | 100% → 0% | none → 0d | resources Lê Minh Thật; Nguyễn Thành Đạt; Nguyễn Ngọc Hân; Phạm Minh Hiếu → none |
| 8 | Thiết kế cơ sở dữ liệu | 2024-10-10 A → 2024-10-10 |  | 99% → 0% | 165d → 0d | resources Nguyễn Thành Đạt; Nguyễn Ngọc Hân; Phạm Minh Hiếu; Phần mềm MySQL Workbench [0.1%] → none |
| 9 | Thiết kế hệ thông backend | 2024-10-24 A → 2024-10-24 | 2024-11-06 A → 2024-11-06 | 100% → 0% | none → 0d | resources Nguyễn Thành Đạt; Nguyễn Ngọc Hân; Phạm Minh Hiếu → none |
| 10 | Thiết kế giao diện người dùng | 2024-11-07 A → 2024-11-07 |  | 99% → 0% |  | resources Nguyễn Thành Đạt; Nguyễn Ngọc Hân; Phạm Minh Hiếu; Phần mềm AdobeXD [0.1%] → none |
| 11 | **Phát triển hệ thống** | 2024-11-28 A → 2024-11-28 |  | 99% → 0% | none → 0d |  |
| 12 | **Backend** | 2024-11-28 A → 2024-11-28 |  | 99% → 0% | 115d → 0d |  |
| 13 | Xây dựng cơ sở dữ liệu | 2024-11-28 A → 2024-11-28 |  | 99% → 0% | 130d → 0d | resources Lương Gia Bảo; Man Nhật Tùng; Máy tính [2 Máy]; Server [1 Server]; Phần mềm IDE [0.1%] → none |
| 14 | Phát triển API cho hệ thống | 2024-12-12 A → 2024-12-12 | 2024-12-18 A → 2024-12-18 | 100% → 0% | none → 0d | resources Lương Gia Bảo; Man Nhật Tùng → none |
| 15 | Tích hợp bảo mật | 2024-12-19 A → 2024-12-19 | 2025-01-02 A → 2025-01-02 | 100% → 0% | none → 0d | resources Lương Gia Bảo; Man Nhật Tùng → none |
| 16 | **Fontend** | 2025-01-03 A → 2025-01-03 |  | 99% → 0% | 65d → 0d | was named Frontend |
| 17 | Phát triển giao diện cho sinh viên | 2025-01-03 A → 2025-01-03 |  | 99% → 0% | 100d → 0d | resources Phạm Kiên Chính; Trần Thanh Tuấn; Lê Thành; Máy tính [3 Máy]; Phần mềm IDE [0.1%] → none |
| 18 | Phát triển giao diện cho giảng viên | 2025-01-24 A → 2025-01-24 | 2025-02-13 A → 2025-02-13 | 100% → 0% | none → 0d | resources Phạm Kiên Chính; Trần Thanh Tuấn; Lê Thành → none |
| 19 | Phát triển giao diện cho quản lý | 2025-02-14 A → 2025-02-14 | 2025-03-13 A → 2025-03-13 | 100% → 0% | none → 0d | resources Phạm Kiên Chính; Trần Thanh Tuấn; Lê Thành → none |
| 20 | **Tích hợp và kiểm thử nội bộ** | 2025-03-14 A → 2025-03-14 | 2025-04-24 A → 2025-04-24 | 100% → 0% | none → 0d |  |
| 21 | Tích hợp fontend và backend | 2025-03-14 A → 2025-03-14 | 2025-04-10 A → 2025-04-10 | 100% → 0% | none → 0d | resources Lương Gia Bảo; Man Nhật Tùng; Phạm Kiên Chính; Trần Thanh Tuấn; Lê Thành → none |
| 22 | Kiểm thử nội bộ | 2025-04-11 A → 2025-04-11 | 2025-04-24 A → 2025-04-24 | 100% → 0% | none → 0d | resources Lương Gia Bảo; Man Nhật Tùng; Phạm Kiên Chính; Trần Thanh Tuấn; Lê Thành; Kiều Trương Hàm Hương; Võ Công Hưng → none |
| 23 | **Kiểm thử hệ thống** | 2025-04-25 A → 2025-04-25 | 2025-05-26 A → 2025-05-26 | 100% → 0% | none → 0d |  |
| 24 | Kiểm thử chức năng | 2025-04-25 A → 2025-04-25 | 2025-05-12 A → 2025-05-12 | 100% → 0% | none → 0d | resources Lương Gia Bảo; Man Nhật Tùng; Phạm Kiên Chính; Trần Thanh Tuấn; Lê Thành; Kiều Trương Hàm Hương; Võ Công Hưng → none |
| 25 | Kiểm thử hiệu suất | 2025-05-13 A → 2025-05-13 | 2025-05-19 A → 2025-05-19 | 100% → 0% | none → 0d | resources Lương Gia Bảo; Man Nhật Tùng; Phạm Kiên Chính; Trần Thanh Tuấn; Lê Thành; Kiều Trương Hàm Hương; Võ Công Hưng → none |
| 26 | Kiểm thử bảo mật | 2025-05-20 A → 2025-05-20 | 2025-05-26 A → 2025-05-26 | 100% → 0% | none → 0d | resources Lương Gia Bảo; Man Nhật Tùng; Phạm Kiên Chính; Trần Thanh Tuấn; Lê Thành; Kiều Trương Hàm Hương; Võ Công Hưng → none |
| 27 | **Triển khai hệ thống** | 2025-05-27 A → 2025-05-27 | 2025-06-16 A → 2025-06-16 | 100% → 0% | none → 0d |  |
| 28 | Cài đặt hệ thống | 2025-05-27 A → 2025-05-27 | 2025-06-02 A → 2025-06-02 | 100% → 0% | none → 0d | resources Lương Gia Bảo; Man Nhật Tùng; Phạm Kiên Chính; Trần Thanh Tuấn; Lê Thành → none |
| 29 | Đào tạo người dùng | 2025-06-03 A → 2025-06-03 | 2025-06-09 A → 2025-06-09 | 100% → 0% | none → 0d | resources Nguyễn Thành Đạt; Nguyễn Ngọc Hân; Phạm Minh Hiếu → none |
| 30 | Triển khai chinh thức | 2025-06-10 A → 2025-06-10 | 2025-06-16 A → 2025-06-16 | 100% → 0% | none → 0d | resources Lê Minh Thật; Nguyễn Thành Đạt; Nguyễn Ngọc Hân; Phạm Minh Hiếu → none |

## Version 5 (data date 2024-10-18, saved 2024-10-31, file DeTai_Nhom09_ver03_temp.mpp)

Note of the change: Add: docs for QLDA

Last finish stays 2025-06-16. Complete tasks 0 → 5.

Added:

| ID | Task | Duration | Start | Finish | Predecessors |
| --- | --- | --- | --- | --- | --- |
| 6 | Hoàn thành khởi động | 0d | 2024-10-02 A | 2024-10-02 A | 3, 4, 5 |
| 12 | Hoàn thành phân tích và thiết kế | 0d | 2024-11-27 | 2024-11-27 | 8, 9, 10, 11 |
| 18 | Hoàn thành backend | 0d | 2025-01-02 | 2025-01-02 | 15, 16, 17 |
| 23 | Hoàn thành frontend | 0d | 2025-03-13 | 2025-03-13 | 20, 21, 22 |
| 27 | Hoàn thành tích hợp | 0d | 2025-04-24 | 2025-04-24 | 25, 26 |
| 32 | Hoàn thành kiểm thử hệ thống | 0d | 2025-05-26 | 2025-05-26 | 29, 30, 31 |
| 37 | Hoàn thành dự án tin học hóa MC | 0d | 2025-06-16 | 2025-06-16 | 36 |

Changed:

| ID | Task | Start | Finish | Complete | Total float | Other |
| --- | --- | --- | --- | --- | --- | --- |
| 1 | **Tin học hóa Đại hoc MC** | 2024-09-16 A |  | 0% → 13% |  |  |
| 2 | **Khởi động dự án** | 2024-09-16 A | 2024-10-02 A | 0% → 100% | 0d → none |  |
| 3 | Xác định yêu cầu ban đầu | 2024-09-16 A | 2024-09-20 A | 0% → 100% | 0d → none | resources none → Lê Minh Thật; Nguyễn Thành Đạt; Nguyễn Ngọc Hân; Phạm Minh Hiếu |
| 4 | Lập kế hoạch cho dự án | 2024-09-23 A | 2024-09-27 A | 0% → 100% | 0d → none | resources none → Lê Minh Thật; Nguyễn Thành Đạt; Nguyễn Ngọc Hân; Phạm Minh Hiếu |
| 5 | Phân công đội ngũ | 2024-09-30 A | 2024-10-02 A | 0% → 100% | 0d → none | resources none → Lê Minh Thật; Nguyễn Thành Đạt; Nguyễn Ngọc Hân; Phạm Minh Hiếu |
| 7 | **Phân tích và thiết kế hệ thông** | 2024-10-03 A |  | 0% → 30% | 0d → 140d |  |
| 8 | Phân tích yêu cầu chi tiết | 2024-10-03 A | 2024-10-09 A | 0% → 100% | 0d → none | resources none → Lê Minh Thật; Nguyễn Thành Đạt; Nguyễn Ngọc Hân; Phạm Minh Hiếu; Tên miền [0.1%] |
| 9 | Thiết kế cơ sở dữ liệu | 2024-10-10 A |  | 0% → 70% |  | resources none → Nguyễn Thành Đạt; Nguyễn Ngọc Hân; Phạm Minh Hiếu; Phần mềm MySQL Workbench [0.1%]; Tên miền [0.1%] |
| 10 | Thiết kế hệ thông backend |  |  |  |  | resources none → Nguyễn Thành Đạt; Nguyễn Ngọc Hân; Phạm Minh Hiếu |
| 11 | Thiết kế giao diện người dùng |  |  |  |  | resources none → Nguyễn Thành Đạt; Nguyễn Ngọc Hân; Phạm Minh Hiếu; Phần mềm AdobeXD [0.1%] |
| 15 | Xây dựng cơ sở dữ liệu |  |  |  |  | resources none → Lương Gia Bảo; Man Nhật Tùng; Máy tính [2 Máy]; Server [1 Server]; Phần mềm IDE [0.1%] |
| 16 | Phát triển API cho hệ thống |  |  |  |  | resources none → Lương Gia Bảo; Man Nhật Tùng |
| 17 | Tích hợp bảo mật |  |  |  |  | resources none → Lương Gia Bảo; Man Nhật Tùng |
| 19 | **Frontend** |  |  |  |  | was named Fontend |
| 20 | Phát triển giao diện cho sinh viên |  |  |  |  | resources none → Phạm Kiên Chính; Trần Thanh Tuấn; Lê Thành; Máy tính [3 Máy]; Phần mềm IDE [0.1%] |
| 21 | Phát triển giao diện cho giảng viên |  |  |  |  | resources none → Phạm Kiên Chính; Trần Thanh Tuấn; Lê Thành |
| 22 | Phát triển giao diện cho quản lý |  |  |  |  | resources none → Phạm Kiên Chính; Trần Thanh Tuấn; Lê Thành |
| 25 | Tích hợp fontend và backend |  |  |  |  | resources none → Lương Gia Bảo; Man Nhật Tùng; Phạm Kiên Chính; Trần Thanh Tuấn; Lê Thành |
| 26 | Kiểm thử nội bộ |  |  |  |  | resources none → Lương Gia Bảo; Man Nhật Tùng; Phạm Kiên Chính; Trần Thanh Tuấn; Lê Thành; Kiều Trương Hàm Hương; Võ Công Hưng |
| 29 | Kiểm thử chức năng |  |  |  |  | resources none → Lương Gia Bảo; Man Nhật Tùng; Phạm Kiên Chính; Trần Thanh Tuấn; Lê Thành; Kiều Trương Hàm Hương; Võ Công Hưng |
| 30 | Kiểm thử hiệu suất |  |  |  |  | resources none → Lương Gia Bảo; Man Nhật Tùng; Phạm Kiên Chính; Trần Thanh Tuấn; Lê Thành; Kiều Trương Hàm Hương; Võ Công Hưng |
| 31 | Kiểm thử bảo mật |  |  |  |  | resources none → Lương Gia Bảo; Man Nhật Tùng; Phạm Kiên Chính; Trần Thanh Tuấn; Lê Thành; Kiều Trương Hàm Hương; Võ Công Hưng |
| 34 | Cài đặt hệ thống |  |  |  |  | resources none → Lương Gia Bảo; Man Nhật Tùng; Phạm Kiên Chính; Trần Thanh Tuấn; Lê Thành |
| 35 | Đào tạo người dùng |  |  |  |  | resources none → Nguyễn Thành Đạt; Nguyễn Ngọc Hân; Phạm Minh Hiếu |
| 36 | Triển khai chinh thức |  |  |  |  | resources none → Lê Minh Thật; Nguyễn Thành Đạt; Nguyễn Ngọc Hân; Phạm Minh Hiếu |
